# Dynaslope2018

Schedule from ProjectLibre, 2018-02-08 to 2018-08-28.

## Calendars

- Standard: Mon-Fri 08:00-12:00, 13:00-17:00; Sat-Sun off. Exceptions (off unless hours are given): 2018-02-08, 2018-02-16, 2018-03-05 to 2018-03-09, 2018-03-29 to 2018-03-30, 2018-04-02 to 2018-04-06, 2018-04-09, 2018-05-01, 2018-05-07 to 2018-05-11, 2018-06-04 to 2018-06-07, 2018-06-12, 2018-07-02 to 2018-07-06, 2018-08-06 to 2018-08-10, 2018-08-21, 2018-08-27.

## Resources

| Resource |
| --- |
| Unassigned |
| geotech 1 |
| geotech 2 |
| geotech 3 |
| geol 1 |
| geol 2 |
| geol 3 |
| geol 4 |
| geol 5 |
| data scientist 1 |
| data scientist 2 |
| data scientist 3 |
| data scientist 4 |
| data scientist 5 |
| data scientist 6 |
| data scientist 7 |
| social scientist 1 |
| social scientist 2 |
| DRRS 1 |
| Surveyor 1 |
| geol 6 |
| geol 7 |
| geol 8 |
| social scientist 3 |
| DRRS 2 |
| comm res 1 |
| comm res 2 |
| web dev 1 |
| emb engr 1 |
| emb engr 2 |
| emb engr 3 |
| emb engr 4 |
| emb engr 5 |
| emb engr 6 |
| emb engr 7 |
| sys ad 1 |
| sys ad 2 |
| web dev 2 |
| web dev 3 |
| web dev 4 |
| web dev 5 |
| programmer 1 |
| programmer 2 |
| programmer 3 |
| programmer 4 |
| emb engr 8 |
| emb engr 9 |
| data scientist 8 |
| analyst 1 |
| analyst 2 |
| analyst 3 |
| analyst 4 |
| MEAL officer 1 |
| MEAL officer 2 |
| MEAL officer 3 |
| MEAL officer 4 |
| MEAL officer 5 |
| MEAL officer 6 |
| MEAL staff 1 |
| MEAL staff 2 |
| MEAL staff 3 |
| MEAL staff 4 |
| MEAL staff 5 |
| MEAL staff 6 |
| MEAL staff 7 |
| MEAL staff 8 |
| MEAL staff 9 |
| MEAL staff 10 |
| MEAL staff 11 |
| MEAL staff 12 |
| comm dev 1 |
| comm dev 2 |
| comm dev 3 |
| comm dev 4 |
| facilitator 1 |
| facilitator 2 |
| facilitator 3 |
| social scientist 3 |
| social scientist 4 |
| monitoringPersonnel40+ |
| eletech 1 |
| eletech 2 |
| eletech 3 |
| eletech 4 |
| eletech 5 |
| emb engr 8 |
| emb engr 9 |
| programmer 5 |
| programmer 6 |
| training specialist 1 |
| training specialist 2 |
| training specialist 3 |
| training specialist 4 |
| MEAL expert |
| technical writer 1 |
| technical writer 2 |
| technical writer 3 |

## Schedule

| ID | WBS | Task | Duration | Start | Finish | Predecessors | Total slack | Constraint | Resources |
| --- | --- | --- | --- | --- | --- | --- | --- | --- | --- |
| 1 | 1 | **Landslide risk information** | 112d? | 2018-03-15 | 2018-08-28 |  |  |  |  |
| 2 | 1.1 | **methods report (Hazards)** | 49d? | 2018-06-19 | 2018-08-28 |  |  |  |  |
| 3 | 1.1.1 | MoMs | 1d? | 2018-08-28 | 2018-08-28 |  | 13500d | as late as possible |  |
| 4 | 1.1.2 | study surficial displacement behaviour | 1d? | 2018-08-28 | 2018-08-28 |  | 13500d | as late as possible |  |
| 5 | 1.1.3 | **slope stability models (FEM)** | 49d | 2018-06-19 | 2018-08-28 |  |  |  |  |
| 6 | 1.1.3.1 | review related literature | 10d | 2018-06-19 | 2018-07-02 |  | 8700d | as late as possible | geotech 1 |
| 7 | 1.1.3.2 | develop prototype | 5d | 2018-07-03 | 2018-07-09 | 6 |  | as late as possible | geotech 1 |
| 8 | 1.1.3.3 | test model with monitoring data | 20d | 2018-07-10 | 2018-08-06 | 7 |  | as late as possible | geotech 1 |
| 9 | 1.1.3.4 | field data gathering | 15d | 2018-07-17 | 2018-08-06 | 7 | 500d | as late as possible | geol 1; geotech 1 |
| 10 | 1.1.3.5 | evaluate model (report as PI of slope stab model) | 4d | 2018-08-07 | 2018-08-10 | 8, 9 |  | as late as possible | geotech 1 |
| 11 | 1.1.3.6 | write report | 5d | 2018-08-13 | 2018-08-17 | 10 |  | as late as possible | geotech 1 |
| 12 | 1.1.3.7 | develop training materials | 3d | 2018-08-20 | 2018-08-23 | 11 |  | as late as possible | geotech 1 |
| 13 | 1.1.3.8 | conduct training | 2d | 2018-08-24 | 2018-08-28 | 12 |  | as late as possible | geotech 1 |
| 14 | 1.1.4 | **slope stability models (LEM1)** | 28d | 2018-07-18 | 2018-08-28 |  |  |  |  |
| 15 | 1.1.4.1 | review related literature | 5d | 2018-07-18 | 2018-07-24 |  | 10800d | as late as possible | geotech 2 |
| 16 | 1.1.4.2 | develop prototype | 5d | 2018-07-25 | 2018-07-31 | 15 |  | as late as possible | geotech 2 |
| 17 | 1.1.4.3 | test model with monitoring data | 5d | 2018-08-01 | 2018-08-07 | 16, 208 |  | as late as possible | geotech 2 |
| 18 | 1.1.4.4 | field data gathering | 15d | 2018-08-06 | 2018-08-28 | 16 | 300d | as late as possible | geol 2; geotech 2 |
| 19 | 1.1.4.5 | evaluate model (report as PI of slope stab model) | 3d | 2018-08-08 | 2018-08-10 | 17 |  | as late as possible | geotech 2 |
| 20 | 1.1.4.6 | write report | 5d | 2018-08-13 | 2018-08-17 | 19 |  | as late as possible | geotech 2 |
| 21 | 1.1.4.7 | develop training materials | 3d | 2018-08-20 | 2018-08-23 | 20 |  | as late as possible | geotech 2 |
| 22 | 1.1.4.8 | conduct training | 2d | 2018-08-24 | 2018-08-28 | 21 |  | as late as possible | geotech 2 |
| 23 | 1.1.5 | **slope stability models (LEM2)** | 28d | 2018-07-18 | 2018-08-28 |  |  |  |  |
| 24 | 1.1.5.1 | review related literature | 5d | 2018-07-18 | 2018-07-24 |  | 10800d | as late as possible | geotech 3 |
| 25 | 1.1.5.2 | develop prototype | 5d | 2018-07-25 | 2018-07-31 | 24 |  | as late as possible | geotech 3 |
| 26 | 1.1.5.3 | test model with monitoring data | 5d | 2018-08-01 | 2018-08-07 | 25, 208 |  | as late as possible | geotech 3 |
| 27 | 1.1.5.4 | field data gathering | 15d | 2018-08-06 | 2018-08-28 | 25 | 300d | as late as possible | geol 3; geotech 3 |
| 28 | 1.1.5.5 | evaluate model (report as PI of slope stab model) | 3d | 2018-08-08 | 2018-08-10 | 26 |  | as late as possible | geotech 3 |
| 29 | 1.1.5.6 | write report | 5d | 2018-08-13 | 2018-08-17 | 28 |  | as late as possible | geotech 3 |
| 30 | 1.1.5.7 | develop training materials | 3d | 2018-08-20 | 2018-08-23 | 29 |  | as late as possible | geotech 3 |
| 31 | 1.1.5.8 | conduct training | 2d | 2018-08-24 | 2018-08-28 | 30 |  | as late as possible | geotech 3 |

| ID | WBS | Task | Duration | Start | Finish | Predecessors | Total slack | Constraint | Resources |
| --- | --- | --- | --- | --- | --- | --- | --- | --- | --- |
| 32 | 1.1.6 | **runout model 1** | 38d | 2018-07-04 | 2018-08-28 |  |  |  |  |
| 33 | 1.1.6.1 | review related literature | 10d | 2018-07-04 | 2018-07-17 |  | 9800d | as late as possible |  |
| 34 | 1.1.6.2 | develop prototype | 10d | 2018-07-18 | 2018-07-31 | 33 |  | as late as possible | geol 4 |
| 35 | 1.1.6.3 | test model with monitoring data | 5d | 2018-08-01 | 2018-08-07 | 34, 208 |  | as late as possible | geol 4 |
| 36 | 1.1.6.4 | evaluate model (report as PI of runout model) | 3d | 2018-08-08 | 2018-08-10 | 35 |  | as late as possible | geol 4 |
| 37 | 1.1.6.5 | write report | 5d | 2018-08-13 | 2018-08-17 | 36 |  | as late as possible | geol 4 |
| 38 | 1.1.6.6 | develop training materials | 3d | 2018-08-20 | 2018-08-23 | 37 |  | as late as possible | geol 4 |
| 39 | 1.1.6.7 | conduct training | 2d | 2018-08-24 | 2018-08-28 | 38 |  | as late as possible | geol 4 |
| 40 | 1.1.7 | **runout model 2** | 33d | 2018-07-11 | 2018-08-28 |  |  |  |  |
| 41 | 1.1.7.1 | review related literature | 5d | 2018-07-11 | 2018-07-17 |  | 10300d | as late as possible |  |
| 42 | 1.1.7.2 | develop prototype | 10d | 2018-07-18 | 2018-07-31 | 41 |  | as late as possible | geol 5 |
| 43 | 1.1.7.3 | test model with monitoring data | 5d | 2018-08-01 | 2018-08-07 | 42, 208 |  | as late as possible | geol 5 |
| 44 | 1.1.7.4 | evaluate model (report as PI of runout model) | 3d | 2018-08-08 | 2018-08-10 | 43 |  | as late as possible | geol 5 |
| 45 | 1.1.7.5 | write report | 5d | 2018-08-13 | 2018-08-17 | 44 |  | as late as possible | geol 5 |
| 46 | 1.1.7.6 | develop training materials | 3d | 2018-08-20 | 2018-08-23 | 45 |  | as late as possible | geol 5 |
| 47 | 1.1.7.7 | conduct training | 2d | 2018-08-24 | 2018-08-28 | 46 |  | as late as possible | geol 5 |
| 48 | 1.1.8 | **threshold model 1** | 42d | 2018-06-28 | 2018-08-28 |  |  |  |  |
| 49 | 1.1.8.1 | review related literature | 5d | 2018-06-28 | 2018-07-04 |  | 9400d | as late as possible | data scientist 1 |
| 50 | 1.1.8.2 | develop prototype | 20d | 2018-07-05 | 2018-08-01 | 49 |  | as late as possible | data scientist 1 |
| 51 | 1.1.8.3 | implement model alongside operations | 10d | 2018-08-02 | 2018-08-15 | 50, 208 |  | as late as possible | data scientist 1 |
| 52 | 1.1.8.4 | evaluate model (report as PI of threshold model) | 1d | 2018-08-16 | 2018-08-16 | 51, 96 |  | as late as possible | data scientist 1 |
| 53 | 1.1.8.5 | write report | 4d | 2018-08-17 | 2018-08-23 | 52 |  | as late as possible | data scientist 1 |
| 54 | 1.1.8.6 | develop training materials | 1d | 2018-08-24 | 2018-08-24 | 53 |  | as late as possible | data scientist 1 |
| 55 | 1.1.8.7 | conduct training | 1d | 2018-08-28 | 2018-08-28 | 54 |  | as late as possible | data scientist 1 |

| ID | WBS | Task | Duration | Start | Finish | Predecessors | Total slack | Constraint | Resources |
| --- | --- | --- | --- | --- | --- | --- | --- | --- | --- |
| 56 | 1.1.9 | **threshold model 2** | 42d | 2018-06-28 | 2018-08-28 |  |  |  |  |
| 57 | 1.1.9.1 | review related literature | 5d | 2018-06-28 | 2018-07-04 |  | 9400d | as late as possible | data scientist 2 |
| 58 | 1.1.9.2 | develop prototype | 20d | 2018-07-05 | 2018-08-01 | 57 |  | as late as possible | data scientist 2 |
| 59 | 1.1.9.3 | implement model alongside operations | 10d | 2018-08-02 | 2018-08-15 | 58, 208 |  | as late as possible | data scientist 2 |
| 60 | 1.1.9.4 | evaluate model (report as PI of threshold model) | 1d | 2018-08-16 | 2018-08-16 | 59, 96 |  | as late as possible | data scientist 2 |
| 61 | 1.1.9.5 | write report | 4d | 2018-08-17 | 2018-08-23 | 60 |  | as late as possible | data scientist 2 |
| 62 | 1.1.9.6 | develop training materials | 1d | 2018-08-24 | 2018-08-24 | 61 |  | as late as possible | data scientist 2 |
| 63 | 1.1.9.7 | conduct training | 1d | 2018-08-28 | 2018-08-28 | 62 |  | as late as possible | data scientist 2 |
| 64 | 1.1.10 | **threshold model 3** | 42d | 2018-06-28 | 2018-08-28 |  |  |  |  |
| 65 | 1.1.10.1 | review related literature | 5d | 2018-06-28 | 2018-07-04 |  | 9400d | as late as possible | data scientist 3 |
| 66 | 1.1.10.2 | develop prototype | 20d | 2018-07-05 | 2018-08-01 | 65 |  | as late as possible | data scientist 3 |
| 67 | 1.1.10.3 | implement model alongside operations | 10d | 2018-08-02 | 2018-08-15 | 66, 208 |  | as late as possible | data scientist 3 |
| 68 | 1.1.10.4 | evaluate model (report as PI of threshold model) | 1d | 2018-08-16 | 2018-08-16 | 67, 96 |  | as late as possible | data scientist 3 |
| 69 | 1.1.10.5 | write report | 4d | 2018-08-17 | 2018-08-23 | 68 |  | as late as possible | data scientist 3 |
| 70 | 1.1.10.6 | develop training materials | 1d | 2018-08-24 | 2018-08-24 | 69 |  | as late as possible | data scientist 3 |
| 71 | 1.1.10.7 | conduct training | 1d | 2018-08-28 | 2018-08-28 | 70 |  | as late as possible | data scientist 3 |
| 72 | 1.1.11 | **threshold model 4** | 42d | 2018-06-28 | 2018-08-28 |  |  |  |  |
| 73 | 1.1.11.1 | review related literature | 5d | 2018-06-28 | 2018-07-04 |  | 9400d | as late as possible | data scientist 4 |
| 74 | 1.1.11.2 | develop prototype | 20d | 2018-07-05 | 2018-08-01 | 73 |  | as late as possible | data scientist 4 |
| 75 | 1.1.11.3 | implement model alongside operations | 10d | 2018-08-02 | 2018-08-15 | 208, 74 |  | as late as possible | data scientist 4 |
| 76 | 1.1.11.4 | evaluate model (report as PI of threshold model) | 1d | 2018-08-16 | 2018-08-16 | 96, 75 |  | as late as possible | data scientist 4 |
| 77 | 1.1.11.5 | write report | 4d | 2018-08-17 | 2018-08-23 | 76 |  | as late as possible | data scientist 4 |
| 78 | 1.1.11.6 | develop training materials | 1d | 2018-08-24 | 2018-08-24 | 77 |  | as late as possible | data scientist 4 |
| 79 | 1.1.11.7 | conduct training | 1d | 2018-08-28 | 2018-08-28 | 78 |  | as late as possible | data scientist 4 |

| ID | WBS | Task | Duration | Start | Finish | Predecessors | Total slack | Constraint | Resources |
| --- | --- | --- | --- | --- | --- | --- | --- | --- | --- |
| 80 | 1.1.12 | **threshold model 5** | 42d | 2018-06-28 | 2018-08-28 |  |  |  |  |
| 81 | 1.1.12.1 | review related literature | 5d | 2018-06-28 | 2018-07-04 |  | 9400d | as late as possible | data scientist 5 |
| 82 | 1.1.12.2 | develop prototype | 20d | 2018-07-05 | 2018-08-01 | 81 |  | as late as possible | data scientist 5 |
| 83 | 1.1.12.3 | implement model alongside operations | 10d | 2018-08-02 | 2018-08-15 | 82, 208 |  | as late as possible | data scientist 5 |
| 84 | 1.1.12.4 | evaluate model (report as PI of threshold model) | 1d | 2018-08-16 | 2018-08-16 | 83, 96 |  | as late as possible | data scientist 5 |
| 85 | 1.1.12.5 | write report | 4d | 2018-08-17 | 2018-08-23 | 84 |  | as late as possible | data scientist 5 |
| 86 | 1.1.12.6 | develop training materials | 1d | 2018-08-24 | 2018-08-24 | 85 |  | as late as possible | data scientist 5 |
| 87 | 1.1.12.7 | conduct training | 1d | 2018-08-28 | 2018-08-28 | 86 |  | as late as possible | data scientist 5 |
| 88 | 1.1.13 | **threshold model 6** | 42d | 2018-06-28 | 2018-08-28 |  |  |  |  |
| 89 | 1.1.13.1 | review related literature | 5d | 2018-06-28 | 2018-07-04 |  | 9400d | as late as possible | data scientist 6 |
| 90 | 1.1.13.2 | develop prototype | 20d | 2018-07-05 | 2018-08-01 | 89 |  | as late as possible | data scientist 6 |
| 91 | 1.1.13.3 | implement model alongside operations | 10d | 2018-08-02 | 2018-08-15 | 90, 208 |  | as late as possible | data scientist 6 |
| 92 | 1.1.13.4 | evaluate model (report as PI of threshold model) | 1d | 2018-08-16 | 2018-08-16 | 91, 96 |  | as late as possible | data scientist 6 |
| 93 | 1.1.13.5 | write report | 4d | 2018-08-17 | 2018-08-23 | 92 |  | as late as possible | data scientist 6 |
| 94 | 1.1.13.6 | develop training materials | 1d | 2018-08-24 | 2018-08-24 | 93 |  | as late as possible | data scientist 6 |
| 95 | 1.1.13.7 | conduct training | 1d | 2018-08-28 | 2018-08-28 | 94 |  | as late as possible | data scientist 6 |
| 96 | 1.1.14 | develop threshold performance index | 20d | 2018-07-19 | 2018-08-15 |  | 10900d | as late as possible | data scientist 7 |
| 97 | 1.2 | **methods report (C&V)** | 65d | 2018-05-25 | 2018-08-28 |  |  |  |  |
| 98 | 1.2.1 | **method 1** | 65d | 2018-05-25 | 2018-08-28 |  |  |  |  |
| 99 | 1.2.1.1 | evaluate C&V frameworks (explore REDAS as one of the frameworks/models) | 20d | 2018-05-25 | 2018-06-22 |  | 7100d | as late as possible | social scientist 1 |
| 100 | 1.2.1.2 | development of C&V assessment modules | 20d | 2018-06-25 | 2018-07-20 | 99 |  | as late as possible | social scientist 1 |
| 101 | 1.2.1.3 | recommend C&V info system | 5d | 2018-08-20 | 2018-08-28 | 100 | 2000d | as late as possible | social scientist 1 |
| 102 | 1.2.1.4 | design database (linking to EWSL data storage and management)) | 5d | 2018-08-16 | 2018-08-23 | 99 | 3800d | as late as possible | social scientist 1 |
| 103 | 1.2.1.5 | write report | 2d | 2018-08-24 | 2018-08-28 | 102 |  | as late as possible | social scientist 1 |
| 104 | 1.2.1.6 | develop training materials | 20d | 2018-07-23 | 2018-08-17 | 100 |  | as late as possible | social scientist 1 |
| 105 | 1.2.1.7 | conduct training | 5d | 2018-08-20 | 2018-08-28 | 104 |  | as late as possible | social scientist 1 |

| ID | WBS | Task | Duration | Start | Finish | Predecessors | Total slack | Constraint | Resources |
| --- | --- | --- | --- | --- | --- | --- | --- | --- | --- |
| 106 | 1.2.2 | **method 2** | 65d | 2018-05-25 | 2018-08-28 |  |  |  |  |
| 107 | 1.2.2.1 | evaluate C&V frameworks (explore REDAS as one of the frameworks/models) | 20d | 2018-05-25 | 2018-06-22 |  | 7100d | as late as possible | social scientist 2 |
| 108 | 1.2.2.2 | development of C&V assessment modules | 20d | 2018-06-25 | 2018-07-20 | 107 |  | as late as possible | social scientist 2 |
| 109 | 1.2.2.3 | recommend C&V info system | 5d | 2018-08-20 | 2018-08-28 | 108 | 2000d | as late as possible | social scientist 2 |
| 110 | 1.2.2.4 | design database (linking to EWSL data storage and management)) | 5d | 2018-08-16 | 2018-08-23 | 107 | 3800d | as late as possible | social scientist 2 |
| 111 | 1.2.2.5 | write report | 2d | 2018-08-24 | 2018-08-28 | 110 |  | as late as possible | social scientist 2 |
| 112 | 1.2.2.6 | develop training materials | 20d | 2018-07-23 | 2018-08-17 | 108 |  | as late as possible | social scientist 2 |
| 113 | 1.2.2.7 | conduct training | 5d | 2018-08-20 | 2018-08-28 | 112 |  | as late as possible | social scientist 2 |
| 114 | 1.3 | **methods report (Risk)** | 112d | 2018-03-15 | 2018-08-28 |  |  |  |  |
| 115 | 1.3.1 | evaluate frameworks for risk | 20d | 2018-03-15 | 2018-04-16 |  | 2400d | as late as possible | DRRS 1 |
| 116 | 1.3.2 | develop methods | 20d | 2018-04-17 | 2018-05-15 | 115 |  | as late as possible | DRRS 1 |
| 117 | 1.3.3 | write report | 2d | 2018-05-16 | 2018-05-17 | 116 |  | as late as possible | DRRS 1 |
| 118 | 1.3.4 | develop training materials | 10d | 2018-05-18 | 2018-05-31 | 117 |  | as late as possible | DRRS 1 |
| 119 | 1.3.5 | conduct training (NC 3) | 60d | 2018-06-01 | 2018-08-28 | 118 |  | as late as possible | DRRS 1 |
| 120 | 1.4 | **per site landslide risk reports (focus sites)** | 55d? | 2018-06-08 | 2018-08-28 |  |  |  |  |
| 121 | 1.4.1 | integration of hazard, capacity, and vulnerability information | 15d | 2018-08-06 | 2018-08-28 | 116, 130, 134 |  | as late as possible | DRRS 1 |
| 122 | 1.4.2 | **per site hazard reports (all sites)** | 34d? | 2018-06-19 | 2018-08-03 |  |  |  |  |
| 123 | 1.4.2.1 | conduct fieldwork (resurvey) | 30d | 2018-06-19 | 2018-07-30 |  | 8700d | as late as possible | geol 6 |
| 124 | 1.4.2.2 | consolidate field notes | 1d? | 2018-07-31 | 2018-07-31 | 123 |  | as late as possible | geol 6 |
| 125 | 1.4.2.3 | review and identify active sites | 1d? | 2018-07-30 | 2018-07-30 |  | 11600d | as late as possible | geol 6 |
| 126 | 1.4.2.4 | conduct quarterly survey (RTS/RTK/remap) | 1d? | 2018-07-31 | 2018-07-31 | 125 |  | as late as possible | Surveyor 1 |
| 127 | 1.4.2.5 | analyze monitoring data (requires access to database) | 1d? | 2018-08-01 | 2018-08-01 | 124, 126 |  | as late as possible | geol 6 |
| 128 | 1.4.2.6 | update volume, depth, extent (using current models) | 1d? | 2018-08-02 | 2018-08-02 | 127 |  | as late as possible | geol 6 |
| 129 | 1.4.2.7 | update thresholds with monitoring data and performance index | 1d? | 2018-08-02 | 2018-08-02 |  | 11900d | as late as possible | geol 6 |
| 130 | 1.4.2.8 | update per site hazard reports (updated maps as PI) | 1d? | 2018-08-03 | 2018-08-03 | 129, 128 |  | as late as possible | geol 6 |

| ID | WBS | Task | Duration | Start | Finish | Predecessors | Total slack | Constraint | Resources |
| --- | --- | --- | --- | --- | --- | --- | --- | --- | --- |
| 131 | 1.4.3 | **per site capacity and vulnerability reports (2 focus sites, Mindanao)** | 40d | 2018-06-08 | 2018-08-03 |  |  |  |  |
| 132 | 1.4.3.1 | conduct data gathering | 15d | 2018-06-08 | 2018-06-29 |  | 8100d | as late as possible | social scientist 3 |
| 133 | 1.4.3.2 | analyze data | 20d | 2018-07-02 | 2018-07-27 | 132 |  | as late as possible | social scientist 3 |
| 134 | 1.4.3.3 | update per site capacity and vulnerability reports | 5d | 2018-07-30 | 2018-08-03 | 133 |  | as late as possible | social scientist 3 |
| 135 | 1.5 | **"Alert protocol" -- essentually how risk knowledge informs early warning practice** | 42d | 2018-06-28 | 2018-08-28 |  |  |  |  |
| 136 | 1.5.1 | review of related literature | 20d | 2018-06-28 | 2018-07-25 |  | 9400d | as late as possible | DRRS 2 |
| 137 | 1.5.2 | review and evaluate current alert protocol | 20d | 2018-07-26 | 2018-08-23 | 136 |  | as late as possible | DRRS 2 |
| 138 | 1.5.3 | recomend alert protocol | 2d | 2018-08-24 | 2018-08-28 | 137 |  | as late as possible | DRRS 2 |
| 139 | 2 | **Early warning system for landslides** | 136d? | 2018-02-08 | 2018-08-28 |  |  |  |  |
| 140 | 2.1 | **Data gathering system** | 136d? | 2018-02-08 | 2018-08-28 |  |  |  |  |
| 141 | 2.1.1 | **community reported data** | 1d? | 2018-08-28 | 2018-08-28 |  |  |  |  |
| 142 | 2.1.1.1 | improve means of gathering surficial data (including transmission) | 1d | 2018-08-28 | 2018-08-28 |  | 13500d | as late as possible |  |
| 143 | 2.1.1.2 | improve means of rainfall validation | 1d? | 2018-08-28 | 2018-08-28 |  | 13500d | as late as possible |  |
| 144 | 2.1.2 | **tilt** | 136d? | 2018-02-08 | 2018-08-28 |  |  |  |  |
| 145 | 2.1.2.1 | characterize tilt sensor(angle range and accuracy of v3 tilt sensor) | 10d | 2018-02-08 | 2018-02-22 |  | 12600d |  | emb engr 1 |
| 146 | 2.1.2.2 | develop tilt sensor feature 1(improve angle range, accuracy,packaging,coms) | 20d | 2018-02-08 | 2018-03-08 |  | 11600d |  |  |
| 147 | 2.1.2.3 | develop tilt sensor feature 2(improve angle range, accuracy,packaging,coms) | 20d | 2018-02-08 | 2018-03-08 |  | 5600d |  |  |
| 148 | 2.1.2.4 | prepare manufacturing documents (project to phivolcs --admin heavy task ito) | 20d | 2018-03-09 | 2018-04-10 | 147 | 5600d |  |  |
| 149 | 2.1.2.5 | manufacturing(posting until Notice to Proceed is awarded --admin heavy task ito) | 40d | 2018-04-11 | 2018-06-06 | 148 | 5600d |  |  |
| 150 | 2.1.2.6 | **batch 1 (procurement to samle boards)** | 56d | 2018-02-08 | 2018-05-03 |  | 8000d |  |  |
| 151 | 2.1.2.6.1 | manufacturing | 40d | 2018-02-08 | 2018-04-10 |  |  |  |  |
| 152 | 2.1.2.6.2 | charsense-devfilt-impfilt | 13d | 2018-04-11 | 2018-04-27 | 151 | 8000d |  |  |
| 153 | 2.1.2.6.3 | borehole drilling | 7d | 2018-02-08 | 2018-02-19 |  | 12600d |  |  |
| 154 | 2.1.2.6.4 | deployment of tilt sensors | 3d | 2018-04-30 | 2018-05-03 | 152, 153 | 8000d |  |  |

Notes:
- 135: trigger to alert + alert to dissemination
- 149: Fractional

| ID | WBS | Task | Duration | Start | Finish | Predecessors | Total slack | Constraint | Resources |
| --- | --- | --- | --- | --- | --- | --- | --- | --- | --- |
| 155 | 2.1.2.7 | **batch 2 (first batch of mass produced units)** | 96d | 2018-02-08 | 2018-06-29 |  | 4000d |  |  |
| 156 | 2.1.2.7.1 | manufacturing | 40d | 2018-04-11 | 2018-06-06 | 151 |  |  |  |
| 157 | 2.1.2.7.2 | charsense-devfilt-impfilt | 13d | 2018-06-07 | 2018-06-26 | 156 | 4000d |  |  |
| 158 | 2.1.2.7.3 | borehole drilling | 7d | 2018-02-08 | 2018-02-19 |  | 12600d |  |  |
| 159 | 2.1.2.7.4 | deployment of tilt sensors | 3d | 2018-06-27 | 2018-06-29 | 157, 158 | 4000d |  |  |
| 160 | 2.1.2.8 | **batch 3 (last batch of mass produced units + repairs)** | 136d? | 2018-02-08 | 2018-08-28 |  |  |  |  |
| 161 | 2.1.2.8.1 | manufacturing | 40d | 2018-06-07 | 2018-08-02 | 156 |  |  |  |
| 162 | 2.1.2.8.2 | charsense-devfilt-impfilt | 13d? | 2018-08-03 | 2018-08-22 | 161 |  |  |  |
| 163 | 2.1.2.8.3 | borehole drilling | 7d | 2018-02-08 | 2018-02-19 |  | 12600d |  |  |
| 164 | 2.1.2.8.4 | deployment of tilt sensors | 3d | 2018-08-23 | 2018-08-28 | 162, 163 |  |  |  |
| 166 | 2.1.3 | **soms** | 136d? | 2018-02-08 | 2018-08-28 |  |  |  |  |
| 167 | 2.1.3.1 | soms characterization 1 (gravimetric site-specific) | 20d | 2018-02-08 | 2018-03-08 |  | 11600d |  |  |
| 168 | 2.1.3.2 | soms characterization 2 (borehole infiltration versus non-borehole infiltration) | 10d | 2018-02-08 | 2018-02-22 |  | 12600d |  |  |
| 169 | 2.1.3.3 | soms characterization 3 (visual water infiltration e.g. rainfall) | 5d | 2018-02-08 | 2018-02-14 |  | 13100d |  |  |
| 170 | 2.1.3.4 | improve soms probe and its orientation | 20d | 2018-02-08 | 2018-03-08 |  | 11600d |  |  |
| 171 | 2.1.3.5 | improve soms feature (accuracy, packaging, coms) | 20d | 2018-02-08 | 2018-03-08 |  | 11600d |  |  |
| 172 | 2.1.3.6 | develop improve soms prototype | 10d | 2018-02-08 | 2018-02-22 |  | 12600d |  |  |
| 173 | 2.1.3.7 | deploy new soms | 5d | 2018-02-08 | 2018-02-14 |  | 13100d |  |  |
| 174 | 2.1.3.8 | develop filter | 8d | 2018-02-08 | 2018-02-20 |  | 12800d |  |  |
| 175 | 2.1.3.9 | implement filter | 5d | 2018-02-08 | 2018-02-14 |  | 13100d |  |  |
| 176 | 2.1.3.10 | char-dev-dep | 1d? | 2018-08-28 | 2018-08-28 |  | 13500d | as late as possible | emb engr 2 |
| 177 | 2.1.3.11 | develop filter | 1d? | 2018-08-28 | 2018-08-28 |  | 13500d | as late as possible | emb engr 2 |
| 178 | 2.1.3.12 | implement filter | 1d? | 2018-08-28 | 2018-08-28 |  | 13500d | as late as possible | emb engr 2 |
| 179 | 2.1.4 | **uts-ext** | 1d? | 2018-08-28 | 2018-08-28 |  |  |  |  |
| 180 | 2.1.4.1 | char-dev-dep | 1d? | 2018-08-28 | 2018-08-28 |  | 13500d | as late as possible | emb engr 3 |
| 181 | 2.1.4.2 | develop filter | 1d? | 2018-08-28 | 2018-08-28 |  | 13500d | as late as possible | emb engr 3 |
| 182 | 2.1.4.3 | implement filter | 1d? | 2018-08-28 | 2018-08-28 |  | 13500d | as late as possible | emb engr 3 |

| ID | WBS | Task | Duration | Start | Finish | Predecessors | Total slack | Constraint | Resources |
| --- | --- | --- | --- | --- | --- | --- | --- | --- | --- |
| 183 | 2.1.5 | **lidar-ext** | 1d? | 2018-08-28 | 2018-08-28 |  |  |  |  |
| 184 | 2.1.5.1 | char-dev-dep | 1d? | 2018-08-28 | 2018-08-28 |  | 13500d | as late as possible | emb engr 4 |
| 185 | 2.1.5.2 | develop filter | 1d? | 2018-08-28 | 2018-08-28 |  | 13500d | as late as possible | emb engr 4 |
| 186 | 2.1.5.3 | implement filter | 1d? | 2018-08-28 | 2018-08-28 |  | 13500d | as late as possible | emb engr 4 |
| 187 | 2.1.6 | **rain gauge** | 1d? | 2018-08-28 | 2018-08-28 |  |  |  |  |
| 188 | 2.1.6.1 | char-dev-dep | 1d? | 2018-08-28 | 2018-08-28 |  | 13500d | as late as possible | emb engr 5 |
| 189 | 2.1.6.2 | develop filter | 1d? | 2018-08-28 | 2018-08-28 |  | 13500d | as late as possible | emb engr 5 |
| 190 | 2.1.6.3 | implement filter | 1d? | 2018-08-28 | 2018-08-28 |  | 13500d | as late as possible | emb engr 5 |
| 191 | 2.1.7 | **piezometer** | 1d? | 2018-08-28 | 2018-08-28 |  |  |  |  |
| 192 | 2.1.7.1 | char-dev-dep | 1d? | 2018-08-28 | 2018-08-28 |  | 13500d | as late as possible | emb engr 6 |
| 193 | 2.1.7.2 | develop filter | 1d? | 2018-08-28 | 2018-08-28 |  | 13500d | as late as possible | emb engr 6 |
| 194 | 2.1.7.3 | implement filter | 1d? | 2018-08-28 | 2018-08-28 |  | 13500d | as late as possible | emb engr 6 |
| 195 | 2.1.8 | **gateway datalogger** | 1d? | 2018-08-24 | 2018-08-24 |  |  |  |  |
| 196 | 2.1.8.1 | char-dev-dep | 1d? | 2018-08-24 | 2018-08-24 |  | 13400d | as late as possible | emb engr 7 |
| 197 | 2.1.9 | **router datalogger** | 1d? | 2018-08-28 | 2018-08-28 |  |  |  |  |
| 198 | 2.1.9.1 | char-dev-dep | 1d? | 2018-08-28 | 2018-08-28 |  | 13500d | as late as possible | emb engr 7 |
| 199 | 2.1.10 | **stand alone datalogger** | 1d? | 2018-08-24 | 2018-08-24 |  |  |  |  |
| 200 | 2.1.10.1 | char-dev-dep | 1d? | 2018-08-24 | 2018-08-24 |  | 13400d | as late as possible | emb engr 7 |
| 201 | 2.1.11 | recommend performance metrics | 1d? | 2018-08-28 | 2018-08-28 |  | 13500d | as late as possible |  |
| 202 | 2.2 | **SMS parsing system for new data structures** | 1d? | 2018-08-28 | 2018-08-28 |  |  |  |  |
| 203 | 2.2.1 | develop sms parsing system | 1d? | 2018-08-28 | 2018-08-28 | 196, 200 |  | as late as possible | emb engr 9 |
| 204 | 2.3 | **Data storage and management system** | 19d? | 2018-07-31 | 2018-08-28 |  |  |  |  |
| 205 | 2.3.1 | refactoring | 1d? | 2018-08-28 | 2018-08-28 |  | 13500d | as late as possible | sys ad 1 |
| 206 | 2.3.2 | develop automated backup | 1d? | 2018-08-28 | 2018-08-28 |  | 13500d | as late as possible | sys ad 1 |
| 207 | 2.3.3 | recommend performance metrics | 1d? | 2018-08-28 | 2018-08-28 |  | 13500d | as late as possible | sys ad 1 |
| 208 | 2.3.4 | develop data access for risk assessment | 1d? | 2018-07-31 | 2018-07-31 |  | 11700d | as late as possible | sys ad 1 |

Notes:
- 204: fractional activity

| ID | WBS | Task | Duration | Start | Finish | Predecessors | Total slack | Constraint | Resources |
| --- | --- | --- | --- | --- | --- | --- | --- | --- | --- |
| 209 | 2.4 | **Data analysis system** | 4d? | 2018-08-22 | 2018-08-28 |  |  |  |  |
| 210 | 2.4.1 | **threshold scripts** | 1d? | 2018-08-28 | 2018-08-28 |  |  |  |  |
| 211 | 2.4.1.1 | implement thresholds | 1d? | 2018-08-28 | 2018-08-28 |  | 13500d | as late as possible | data scientist 7 |
| 212 | 2.4.2 | **visualization scripts** | 1d? | 2018-08-28 | 2018-08-28 |  |  |  |  |
| 213 | 2.4.2.1 | research data visualization concepts (inc. hazard concepts) | 1d? | 2018-08-28 | 2018-08-28 |  | 13500d | as late as possible | data scientist 8 |
| 214 | 2.4.2.2 | improvement of webcharts | 1d? | 2018-08-28 | 2018-08-28 |  | 13500d | as late as possible | web dev 2 |
| 215 | 2.4.2.3 | improvement of webchart generation | 1d? | 2018-08-28 | 2018-08-28 |  | 13500d | as late as possible | web dev 2 |
| 216 | 2.4.3 | recommend performance metrics (in relation to automation) | 1d? | 2018-08-22 | 2018-08-22 |  | 13200d | as late as possible | data scientist 7 |
| 217 | 2.4.4 | draft process profile (recomm to automation integration) | 1d? | 2018-08-23 | 2018-08-23 |  | 13300d | as late as possible | data scientist 7 |
| 218 | 2.5 | **Dissemination system** | 4d? | 2018-08-22 | 2018-08-28 |  |  |  |  |
| 219 | 2.5.1 | **alert generation module** | 4d? | 2018-08-22 | 2018-08-28 |  |  |  |  |
| 220 | 2.5.1.1 | create modularized infrastructure for different operational triggers | 1d? | 2018-08-28 | 2018-08-28 |  | 13500d | as late as possible | programmer 1 |
| 221 | 2.5.1.2 | create "special cases" tables (e.g., Puguis) | 1d? | 2018-08-24 | 2018-08-24 |  | 13400d | as late as possible | programmer 1 |
| 222 | 2.5.1.3 | implement alert protocol (trigger to alert) revisions | 1d? | 2018-08-28 | 2018-08-28 | 221 |  | as late as possible | programmer 1 |
| 223 | 2.5.1.4 | recommend performance metrics (in relation to automation) | 1d? | 2018-08-22 | 2018-08-22 |  | 13200d | as late as possible | programmer 1 |
| 224 | 2.5.1.5 | draft process profile (recomm to automation integration) | 1d? | 2018-08-23 | 2018-08-23 |  | 13300d | as late as possible | programmer 1 |
| 225 | 2.5.2 | **GSM module server** | 4d? | 2018-08-22 | 2018-08-28 |  |  |  |  |
| 226 | 2.5.2.1 | improve GSM module server | 1d? | 2018-08-28 | 2018-08-28 |  | 13500d | as late as possible | emb engr 8 |
| 227 | 2.5.2.2 | recommend performance metrics (in relation to automation) | 1d? | 2018-08-22 | 2018-08-22 |  | 13200d | as late as possible | emb engr 8 |
| 228 | 2.5.2.3 | draft process profile (recomm to automation integration) | 1d? | 2018-08-23 | 2018-08-23 |  | 13300d | as late as possible | emb engr 8 |
| 229 | 2.5.3 | **chatterbox** | 4d? | 2018-08-22 | 2018-08-28 |  |  |  |  |
| 230 | 2.5.3.1 | revise scripts for SMS generation and sending (automation?) | 1d? | 2018-08-28 | 2018-08-28 |  | 13500d | as late as possible | web dev 3 |
| 231 | 2.5.3.2 | implement feature requests | 1d? | 2018-08-28 | 2018-08-28 |  | 13500d | as late as possible | web dev 3 |
| 232 | 2.5.3.3 | improve performance | 1d? | 2018-08-28 | 2018-08-28 |  | 13500d | as late as possible | web dev 3 |
| 233 | 2.5.3.4 | recommend performance metrics (in relation to automation) | 1d? | 2018-08-22 | 2018-08-22 |  | 13200d | as late as possible | web dev 3 |
| 234 | 2.5.3.5 | draft process profile (recomm to automation integration) | 1d? | 2018-08-23 | 2018-08-23 |  | 13300d | as late as possible | web dev 3 |

Notes:
- 214: should include speed of generation of charts

| ID | WBS | Task | Duration | Start | Finish | Predecessors | Total slack | Constraint | Resources |
| --- | --- | --- | --- | --- | --- | --- | --- | --- | --- |
| 235 | 2.5.4 | **webcall** | 4d? | 2018-08-22 | 2018-08-28 |  |  |  |  |
| 236 | 2.5.4.1 | acquire, implement hardware | 1d? | 2018-08-28 | 2018-08-28 |  | 13500d | as late as possible | web dev 4 |
| 237 | 2.5.4.2 | develop/integrate software | 1d? | 2018-08-28 | 2018-08-28 |  | 13500d | as late as possible | web dev 4 |
| 238 | 2.5.4.3 | recommend performance metrics (in relation to automation) | 1d? | 2018-08-22 | 2018-08-22 |  | 13200d | as late as possible | web dev 4 |
| 239 | 2.5.4.4 | draft process profile (recomm to automation integration) | 1d? | 2018-08-23 | 2018-08-23 |  | 13300d | as late as possible | web dev 4 |
| 240 | 2.5.5 | **bulletin generator** | 4d? | 2018-08-22 | 2018-08-28 |  |  |  |  |
| 241 | 2.5.5.1 | revise scripts for bulletin generation and sending (automation?) | 1d? | 2018-08-28 | 2018-08-28 |  | 13500d | as late as possible | web dev 5 |
| 242 | 2.5.5.2 | improve performance | 1d? | 2018-08-28 | 2018-08-28 |  | 13500d | as late as possible | web dev 5 |
| 243 | 2.5.5.3 | recommend performance metrics (in relation to automation) | 1d? | 2018-08-22 | 2018-08-22 |  | 13200d | as late as possible | web dev 5 |
| 244 | 2.5.5.4 | draft process profile (recomm to automation integration) | 1d? | 2018-08-23 | 2018-08-23 |  | 13300d | as late as possible | web dev 5 |
| 245 | 2.6 | **Local Info system (ISD)** | 1d? | 2018-08-28 | 2018-08-28 |  |  |  |  |
| 246 | 2.6.1 | consolidate recommendations into ict specifications | 1d? | 2018-08-28 | 2018-08-28 |  | 13500d | as late as possible | analyst 1 |
| 247 | 2.6.2 | use case testing | 1d? | 2018-08-28 | 2018-08-28 |  | 13500d | as late as possible | analyst 1 |
| 248 | 2.6.3 | develop local codes updating system | 1d? | 2018-08-28 | 2018-08-28 |  | 13500d | as late as possible | programmer 2 |
| 249 | 2.6.4 | port ews-l modules | 1d? | 2018-08-28 | 2018-08-28 |  | 13500d | as late as possible | programmer 2 |
| 250 | 2.7 | **Automation integration system** | 2d? | 2018-08-24 | 2018-08-28 |  |  |  |  |
| 251 | 2.7.1 | automate recommended processes | 1d? | 2018-08-24 | 2018-08-24 | 217, 224, 228, 234, 239, 244 |  | as late as possible | programmer 3 |
| 252 | 2.7.2 | evaluate automation performance | 1d? | 2018-08-28 | 2018-08-28 | 251, 255 |  | as late as possible | MEAL officer 2 |
| 253 | 2.8 | **Performance monitoring system of central system** | 2d? | 2018-08-23 | 2018-08-24 |  |  |  |  |
| 254 | 2.8.1 | consolidate recommendations for performance metrics | 1d? | 2018-08-23 | 2018-08-23 | 216, 223, 227, 233, 238, 243 |  | as late as possible | MEAL officer 1 |
| 255 | 2.8.2 | develop performance monitoring system | 1d? | 2018-08-24 | 2018-08-24 | 254 |  | as late as possible | programmer 4 |
| 256 | 2.9 | **Organized Local Early Warning Committee (LEWC)** | 1d? | 2018-08-28 | 2018-08-28 |  |  |  |  |
| 257 | 2.9.1 | **LEWC org structure and mission/vision (47 sites)** | 1d? | 2018-08-28 | 2018-08-28 |  |  |  |  |
| 258 | 2.9.1.1 | prepare modules | 1d? | 2018-08-28 | 2018-08-28 |  | 13500d | as late as possible | comm dev 1 |
| 259 | 2.9.1.2 | conduct training/ gather data | 1d? | 2018-08-28 | 2018-08-28 |  | 13500d | as late as possible | facilitator 1 |

Notes:
- 255: PI: should be able to produce a report, either on-demand or periodically
- 257: (focus sites)

| ID | WBS | Task | Duration | Start | Finish | Predecessors | Total slack | Constraint | Resources |
| --- | --- | --- | --- | --- | --- | --- | --- | --- | --- |
| 260 | 2.9.2 | **Guidelines for community organizing (2 sites)** | 1d? | 2018-08-28 | 2018-08-28 |  |  |  |  |
| 261 | 2.9.2.1 | develop methods for community organizing | 1d? | 2018-08-28 | 2018-08-28 |  | 13500d | as late as possible | comm dev 2 |
| 262 | 2.9.2.2 | gather data (fieldwork) | 1d? | 2018-08-28 | 2018-08-28 |  | 13500d | as late as possible | facilitator 2 |
| 263 | 2.9.2.3 | recommend activities for community organizing | 1d? | 2018-08-28 | 2018-08-28 |  | 13500d | as late as possible | comm dev 2 |
| 264 | 2.9.3 | **develop guidelines for institutionalization of LEWC (2 sites)** | 1d? | 2018-08-28 | 2018-08-28 |  |  |  |  |
| 265 | 2.9.3.1 | develop methods for crafing guidelines | 1d? | 2018-08-28 | 2018-08-28 |  | 13500d | as late as possible | comm dev 3 |
| 266 | 2.9.3.2 | gather data (fieldwork) | 1d? | 2018-08-28 | 2018-08-28 |  | 13500d | as late as possible | facilitator 3 |
| 267 | 2.9.3.3 | develop guidelines for institutionalization of LEWC | 1d? | 2018-08-28 | 2018-08-28 |  | 13500d | as late as possible | comm dev 3 |
| 268 | 2.10 | **Guidelines for developing contingency plans for DSL (barangay level)** | 3d? | 2018-08-23 | 2018-08-28 |  |  |  |  |
| 269 | 2.10.1 | review literature on contingency plans | 1d? | 2018-08-23 | 2018-08-23 |  | 13300d | as late as possible | social scientist 3 |
| 270 | 2.10.2 | draft guidelines for contingency plans | 1d? | 2018-08-24 | 2018-08-24 | 269 |  | as late as possible | social scientist 3 |
| 271 | 2.10.3 | approve guidelines for contingency plans | 1d? | 2018-08-28 | 2018-08-28 | 270 |  | as late as possible | social scientist 3 |
| 272 | 2.11 | **Operations manual** | 1d? | 2018-08-28 | 2018-08-28 |  |  |  |  |
| 273 | 2.11.1 | update EWS operations manual based on protocol (to MEAL) | 1d? | 2018-08-28 | 2018-08-28 |  | 13500d | as late as possible | DRRS 2 |
| 275 | 3 | **Early warning information** | 2d? | 2018-08-24 | 2018-08-28 |  |  |  |  |
| 276 | 3.1 | generate, review, and release EWI | 1d? | 2018-08-28 | 2018-08-28 |  | 13500d | as late as possible | monitoringPersonnel40+ |
| 277 | 3.2 | **EWI support** | 2d? | 2018-08-24 | 2018-08-28 |  |  |  |  |
| 278 | 3.2.1 | **operational systems** | 1d? | 2018-08-28 | 2018-08-28 |  |  |  |  |
| 279 | 3.2.1.1 | **sensors and dataloggers** | 1d? | 2018-08-28 | 2018-08-28 |  |  |  |  |
| 280 | 3.2.1.1.1 | replace defective sensors and loggers | 1d? | 2018-08-28 | 2018-08-28 |  | 13500d | as late as possible | eletech 1 |
| 281 | 3.2.1.1.2 | monitor sensor and datalogger health status | 1d? | 2018-08-28 | 2018-08-28 |  | 13500d | as late as possible | emb engr 8 |
| 282 | 3.2.1.1.3 | track maintenance activities | 1d? | 2018-08-28 | 2018-08-28 |  | 13500d | as late as possible | emb engr 8 |
| 283 | 3.2.1.1.4 | manage inventory | 1d? | 2018-08-28 | 2018-08-28 |  | 13500d | as late as possible | eletech 2 |
| 284 | 3.2.1.1.5 | track PLAA events | 1d? | 2018-08-28 | 2018-08-28 |  | 13500d | as late as possible | emb engr 8 |
| 285 | 3.2.1.1.6 | track sensor events | 1d? | 2018-08-28 | 2018-08-28 |  | 13500d | as late as possible | emb engr 8 |
| 286 | 3.2.1.1.7 | field-based maintenance | 1d? | 2018-08-28 | 2018-08-28 |  | 13500d | as late as possible | eletech 3 |

Notes:
- 280: includes drilling and deployment; (may be include also procurement of drilling services?)

| ID | WBS | Task | Duration | Start | Finish | Predecessors | Total slack | Constraint | Resources |
| --- | --- | --- | --- | --- | --- | --- | --- | --- | --- |
| 287 | 3.2.1.2 | **central server (software)** | 1d? | 2018-08-28 | 2018-08-28 |  |  |  |  |
| 288 | 3.2.1.2.1 | maintain data gathering system | 1d? | 2018-08-28 | 2018-08-28 |  | 13500d | as late as possible | emb engr 9 |
| 289 | 3.2.1.2.2 | maintain data storage and management system | 1d? | 2018-08-28 | 2018-08-28 |  | 13500d | as late as possible | emb engr 9 |
| 290 | 3.2.1.2.3 | maintain data analysis system | 1d? | 2018-08-28 | 2018-08-28 |  | 13500d | as late as possible | programmer 5 |
| 291 | 3.2.1.2.4 | maintain info dissemination system | 1d? | 2018-08-28 | 2018-08-28 |  | 13500d | as late as possible | emb engr 9 |
| 292 | 3.2.1.2.5 | train staff for debugging | 0.5d? | 2018-08-28 | 2018-08-28 |  | 13550d | as late as possible | emb engr 9; programmer 5 |
| 293 | 3.2.1.2.6 | produce code and documentation standards | 1d? | 2018-08-28 | 2018-08-28 |  | 13500d | as late as possible | programmer 5 |
| 294 | 3.2.2 | **updated database** | 1d? | 2018-08-28 | 2018-08-28 |  |  |  |  |
| 295 | 3.2.2.1 | maintain tables | 1d? | 2018-08-28 | 2018-08-28 |  | 13500d | as late as possible | emb engr 9 |
| 296 | 3.2.3 | **parsed SMS** | 1d? | 2018-08-28 | 2018-08-28 |  |  |  |  |
| 297 | 3.2.3.1 | maintain SMS parsing | 1d? | 2018-08-28 | 2018-08-28 |  | 13500d | as late as possible | emb engr 9 |
| 298 | 3.2.4 | **capable personnel for monitoring and early warning** | 2d? | 2018-08-24 | 2018-08-28 |  |  |  |  |
| 299 | 3.2.4.1 | **develop training materials** | 1d? | 2018-08-24 | 2018-08-24 |  |  |  |  |
| 300 | 3.2.4.1.1 | hazard monitoring | 1d? | 2018-08-24 | 2018-08-24 |  | 13400d | as late as possible | training specialist 1 |
| 301 | 3.2.4.1.2 | analysis and validation | 1d? | 2018-08-24 | 2018-08-24 |  | 13400d | as late as possible | training specialist 1 |
| 302 | 3.2.4.1.3 | sensor maintenance | 1d? | 2018-08-24 | 2018-08-24 |  | 13400d | as late as possible | training specialist 1 |
| 303 | 3.2.4.1.4 | communications protocol | 1d? | 2018-08-24 | 2018-08-24 |  | 13400d | as late as possible | training specialist 1 |
| 304 | 3.2.4.2 | **conduct EWS protocol trainings (internal)** | 1d? | 2018-08-28 | 2018-08-28 | 299 |  |  |  |
| 305 | 3.2.4.2.1 | hazard monitoring | 1d? | 2018-08-28 | 2018-08-28 |  |  | as late as possible | geotech 1 |
| 306 | 3.2.4.2.2 | analysis and validation | 1d? | 2018-08-28 | 2018-08-28 |  |  | as late as possible | data scientist 7 |
| 307 | 3.2.4.2.3 | sensor maintenance | 1d? | 2018-08-28 | 2018-08-28 |  |  | as late as possible | eletech 5 |
| 308 | 3.2.4.2.4 | communications protocol | 1d? | 2018-08-28 | 2018-08-28 |  |  | as late as possible | DRRS 2 |
| 309 | 3.2.4.3 | **conduct EWS protocol trainings (external)** | 1d? | 2018-08-28 | 2018-08-28 | 299 |  |  |  |
| 310 | 3.2.4.3.1 | hazard monitoring | 1d? | 2018-08-28 | 2018-08-28 |  |  | as late as possible | training specialist 2 |
| 311 | 3.2.4.3.2 | analysis and validation | 1d? | 2018-08-28 | 2018-08-28 |  |  | as late as possible | training specialist 2 |
| 312 | 3.2.4.3.3 | sensor maintenance | 1d? | 2018-08-28 | 2018-08-28 |  |  | as late as possible | training specialist 2 |
| 313 | 3.2.4.3.4 | communications protocol | 1d? | 2018-08-28 | 2018-08-28 |  |  | as late as possible | training specialist 2 |

Notes:
- 292: for purpose of pool of debuggers

| ID | WBS | Task | Duration | Start | Finish | Predecessors | Total slack | Constraint | Resources |
| --- | --- | --- | --- | --- | --- | --- | --- | --- | --- |
| 314 | 4 | **Strategic communications** | 3d? | 2018-08-23 | 2018-08-28 |  |  |  |  |
| 315 | 4.1 | research stakeholder info needs | 1d? | 2018-08-23 | 2018-08-23 |  | 13300d | as late as possible | comm res 1 |
| 316 | 4.2 | research policy process | 1d? | 2018-08-28 | 2018-08-28 |  | 13500d | as late as possible | comm res 2 |
| 317 | 4.3 | develop strategic comm plan | 1d? | 2018-08-24 | 2018-08-24 | 315 |  | as late as possible | comm res 1 |
| 318 | 4.4 | **develop communication materials** | 1d? | 2018-08-28 | 2018-08-28 | 317 |  |  |  |
| 319 | 4.4.1 | **website** | 1d? | 2018-08-28 | 2018-08-28 |  |  |  |  |
| 320 | 4.4.1.1 | develop website content | 1d? | 2018-08-28 | 2018-08-28 |  |  | as late as possible | comm res 1 |
| 321 | 4.4.1.2 | design website | 1d? | 2018-08-28 | 2018-08-28 |  |  | as late as possible | comm res 1 |
| 322 | 4.4.1.3 | develop content management system | 1d? | 2018-08-28 | 2018-08-28 |  |  | as late as possible | web dev 1 |
| 323 | 4.5 | develop non-website communications | 1d? | 2018-08-28 | 2018-08-28 |  | 13500d | as late as possible | comm res 2 |
| 324 | 5 | **MEAL system** | 136d? | 2018-02-08 | 2018-08-28 |  |  |  |  |
| 325 | 5.1 | develop MEAL framework | 2d | 2018-08-15 | 2018-08-16 |  | 12800d | as late as possible | MEAL expert; MEAL officer 1; MEAL officer 2; MEAL officer 3; MEAL officer 4; MEAL officer 5; MEAL officer 6 |
| 326 | 5.2 | develop MEAL plan | 3d | 2018-08-17 | 2018-08-22 | 325 |  | as late as possible | MEAL expert; MEAL officer 1; MEAL officer 2; MEAL officer 3; MEAL officer 4; MEAL officer 5; MEAL officer 6 |
| 327 | 5.3 | **monitoring mechanisms** | 136d? | 2018-02-08 | 2018-08-28 |  |  |  |  |
| 328 | 5.3.1 | **standard documentation and storage** | 2d? | 2018-08-24 | 2018-08-28 |  |  |  |  |
| 329 | 5.3.1.1 | design documentation templates | 1d? | 2018-08-24 | 2018-08-24 | 326 | 100d | as late as possible | MEAL officer 6 |
| 330 | 5.3.1.2 | design repository system | 1d? | 2018-08-28 | 2018-08-28 | 329 |  | as late as possible | programmer 1 |
| 331 | 5.3.2 | **PLAA** | 1d | 2018-08-28 | 2018-08-28 |  |  |  |  |
| 332 | 5.3.2.1 | review current PLAA vis-a-vis MEAL plan | 0.5d | 2018-08-28 | 2018-08-28 | 326 | 200d | as late as possible | MEAL officer 1; MEAL staff 1; MEAL staff 2 |
| 333 | 5.3.2.2 | revise PLAA guidelines | 0.5d | 2018-08-28 | 2018-08-28 | 332 |  | as late as possible | MEAL officer 1; MEAL staff 1; MEAL staff 2 |
| 334 | 5.3.3 | **EWS-QA** | 136d | 2018-02-08 | 2018-08-28 |  |  |  |  |
| 335 | 5.3.3.1 | review current EWS-QA vis-a-vis MEAL plan | 0.5d | 2018-08-28 | 2018-08-28 | 326 | 200d | as late as possible | MEAL officer 2; MEAL staff 3; MEAL staff 4 |
| 336 | 5.3.3.2 | revise EWS-QA guidelines | 0.5d | 2018-08-28 | 2018-08-28 | 335 |  | as late as possible | MEAL officer 2; MEAL staff 3; MEAL staff 4 |
| 337 | 5.3.3.3 | revise tools for data gathering | 3d | 2018-02-08 | 2018-02-12 |  | 13300d |  | programmer 2 |

| ID | WBS | Task | Duration | Start | Finish | Predecessors | Total slack | Constraint | Resources |
| --- | --- | --- | --- | --- | --- | --- | --- | --- | --- |
| 338 | 5.3.4 | **outcome-impact** | 1d | 2018-08-28 | 2018-08-28 |  |  |  |  |
| 339 | 5.3.4.1 | review outcome-impact vis-a-vis MEAL plan | 0.5d | 2018-08-28 | 2018-08-28 | 326 | 200d | as late as possible | MEAL officer 3; MEAL staff 5; MEAL staff 6 |
| 340 | 5.3.4.2 | revise outcome-impact | 0.5d | 2018-08-28 | 2018-08-28 | 339 |  | as late as possible | MEAL officer 3; MEAL staff 5; MEAL staff 6 |
| 341 | 5.3.5 | **administrative process** | 1d | 2018-08-28 | 2018-08-28 |  |  |  |  |
| 342 | 5.3.5.1 | review admin process trackers vis-a-vis MEAL plan | 0.5d | 2018-08-28 | 2018-08-28 | 326 | 200d | as late as possible | MEAL officer 4; MEAL staff 7; MEAL staff 8 |
| 343 | 5.3.5.2 | revise admin process trackers | 0.5d | 2018-08-28 | 2018-08-28 | 342 |  | as late as possible | MEAL officer 4; MEAL staff 7; MEAL staff 8 |
| 344 | 5.3.6 | **project output** | 3d | 2018-08-23 | 2018-08-28 |  |  |  |  |
| 345 | 5.3.6.1 | develop team output tracker | 1d | 2018-08-23 | 2018-08-23 | 326 |  | as late as possible | MEAL officer 5; MEAL staff 10; MEAL staff 9 |
| 346 | 5.3.6.2 | develop individual output tracker | 1d | 2018-08-24 | 2018-08-24 | 326, 345 |  | as late as possible | MEAL officer 5; MEAL staff 10; MEAL staff 9 |
| 347 | 5.3.6.3 | develop individual capacity tracker | 1d | 2018-08-28 | 2018-08-28 | 326, 346 |  | as late as possible | MEAL officer 5; MEAL staff 10; MEAL staff 9 |
| 348 | 5.3.7 | **stakeholder concerns** | 0.5d | 2018-08-28 | 2018-08-28 |  |  |  |  |
| 349 | 5.3.7.1 | develop stakeholder concerns tracker | 0.5d | 2018-08-28 | 2018-08-28 | 326 | 250d | as late as possible | MEAL officer 3; MEAL staff 5; MEAL staff 6 |
| 352 | 5.4 | **data gathering** | 136d? | 2018-02-08 | 2018-08-28 |  |  |  |  |
| 353 | 5.4.1 | EWS-QA | 1d? | 2018-08-28 | 2018-08-28 |  | 13500d | as late as possible | MEAL officer 1 |
| 354 | 5.4.2 | PLAA (per site) | 35d | 2018-07-09 | 2018-08-28 |  | 10100d | as late as possible | MEAL officer 2 |
| 355 | 5.4.3 | outcome-iimpact | 1d? | 2018-08-28 | 2018-08-28 |  | 13500d | as late as possible | MEAL officer 3 |
| 356 | 5.4.4 | project output | 1d? | 2018-08-28 | 2018-08-28 |  | 13500d | as late as possible | MEAL officer 5 |
| 357 | 5.4.5 | stakeholder concerns | 1d? | 2018-08-28 | 2018-08-28 |  | 13500d | as late as possible | MEAL officer 5 |
| 358 | 5.4.6 | admin process | 1d? | 2018-02-08 | 2018-02-08 |  | 13500d |  | MEAL officer 4 |
| 359 | 5.5 | evaluate | 1d? | 2018-08-28 | 2018-08-28 |  | 13500d | as late as possible |  |
| 360 | 5.6 | provide recomms | 1d? | 2018-08-28 | 2018-08-28 |  | 13500d | as late as possible |  |
| 363 | 5.7 | **MEAL implem** | 3d? | 2018-08-23 | 2018-08-28 |  |  |  |  |
| 364 | 5.7.1 | **EWS-QA** | 3d? | 2018-08-23 | 2018-08-28 | 326 |  |  |  |
| 365 | 5.7.1.1 | **activity series 1** | 3d? | 2018-08-23 | 2018-08-28 |  |  |  |  |
| 366 | 5.7.1.1.1 | gather data | 1d? | 2018-08-23 | 2018-08-23 |  |  |  |  |
| 367 | 5.7.1.1.2 | analyze, evaluate data | 1d? | 2018-08-24 | 2018-08-24 | 366 |  |  |  |
| 368 | 5.7.1.1.3 | provide recommendations | 1d? | 2018-08-28 | 2018-08-28 | 367 |  |  |  |

Notes:
- 354: fieldworks + pre-field activities

| ID | WBS | Task | Duration | Start | Finish | Predecessors | Total slack |
| --- | --- | --- | --- | --- | --- | --- | --- |
| 369 | 5.7.2 | **PLAA** | 1d? | 2018-08-23 | 2018-08-23 | 326 | 200d |
| 370 | 5.7.2.1 | **activity series 1** | 1d? | 2018-08-23 | 2018-08-23 |  | 200d |
| 371 | 5.7.2.1.1 | gather data | 1d? | 2018-08-23 | 2018-08-23 |  | 200d |
| 372 | 5.7.2.1.2 | analyze, evaluate data | 1d? | 2018-08-23 | 2018-08-23 |  | 200d |
| 373 | 5.7.2.1.3 | provide recommendations | 1d? | 2018-08-23 | 2018-08-23 |  | 200d |
| 374 | 5.7.3 | **outcome-impact** | 1d? | 2018-08-23 | 2018-08-23 | 326 | 200d |
| 375 | 5.7.3.1 | **activity series 1** | 1d? | 2018-08-23 | 2018-08-23 |  | 200d |
| 376 | 5.7.3.1.1 | gather data | 1d? | 2018-08-23 | 2018-08-23 |  | 200d |
| 377 | 5.7.3.1.2 | analyze, evaluate data | 1d? | 2018-08-23 | 2018-08-23 |  | 200d |
| 378 | 5.7.3.1.3 | provide recommendations | 1d? | 2018-08-23 | 2018-08-23 |  | 200d |
| 379 | 5.7.4 | **project output** | 1d? | 2018-08-23 | 2018-08-23 | 326 | 200d |
| 380 | 5.7.4.1 | **activity series 1** | 1d? | 2018-08-23 | 2018-08-23 |  | 200d |
| 381 | 5.7.4.1.1 | gather data | 1d? | 2018-08-23 | 2018-08-23 |  | 200d |
| 382 | 5.7.4.1.2 | analyze, evaluate data | 1d? | 2018-08-23 | 2018-08-23 |  | 200d |
| 383 | 5.7.4.1.3 | provide recommendations | 1d? | 2018-08-23 | 2018-08-23 |  | 200d |
| 384 | 5.7.5 | **stakeholder concerns** | 1d? | 2018-08-23 | 2018-08-23 | 326 | 200d |
| 385 | 5.7.5.1 | **activity series 1** | 1d? | 2018-08-23 | 2018-08-23 |  | 200d |
| 386 | 5.7.5.1.1 | gather data | 1d? | 2018-08-23 | 2018-08-23 |  | 200d |
| 387 | 5.7.5.1.2 | analyze, evaluate data | 1d? | 2018-08-23 | 2018-08-23 |  | 200d |
| 388 | 5.7.5.1.3 | provide recommendations | 1d? | 2018-08-23 | 2018-08-23 |  | 200d |
| 389 | 5.7.6 | **admin process** | 1d? | 2018-08-23 | 2018-08-23 | 326 | 200d |
| 390 | 5.7.6.1 | **activity series 1** | 1d? | 2018-08-23 | 2018-08-23 |  | 200d |
| 391 | 5.7.6.1.1 | gather data | 1d? | 2018-08-23 | 2018-08-23 |  | 200d |
| 392 | 5.7.6.1.2 | analyze, evaluate data | 1d? | 2018-08-23 | 2018-08-23 |  | 200d |
| 393 | 5.7.6.1.3 | provide recommendations | 1d? | 2018-08-23 | 2018-08-23 |  | 200d |
